# PPCAP - faza2

Schedule from MS Project, 2021-05-05 to 2023-05-05, costs in €.

## Calendars

- Standard: Mon-Fri 08:00-12:00, 13:00-17:00; Sat-Sun off.

## Resources

| Resource | Rate |
| --- | --- |
| Авионске карте Београд-Женева |  |
| Авионске карте Стокхолм-Женева |  |
| Авионске карте Стокхолм-Београд |  |
| Авионске карте Женева-Београд |  |
| Авионске карте Љубљана-Београд |  |
| Хотел Београд |  |
| Хотел Женева |  |
| Београд трошкови(превоз, храна…) |  |
| Женева трошкови(превоз, храна…) |  |
| Авионске карте Цирих-Београд |  |
| ЕТФ - Администратор 1 | 11 |
| ЕТФ - Техничар 1 | 12.5 |
| ЕТХ - Администратор 1 | 23 |
| ЕТХ - Инжењер 1 | 25 |
| ЕТХ - Истраживач 1 | 30 |
| ЕТХ - Доцент 1 | 20 |
| ЕТФ - Инжењер 2 | 14 |
| ЕТФ - Администратор 3 | 11 |
| ЕТФ - Инжењер 1 | 14 |
| ЕТФ - Администратор 2 | 11 |

## Schedule

| ID | WBS | Task | Type | Duration | Start | Finish | Predecessors | Total slack | Free slack | Constraint | Resources | Work | Cost |
| --- | --- | --- | --- | --- | --- | --- | --- | --- | --- | --- | --- | --- | --- |
| 1 | 1 | **Управљање пројектом** |  | 523d | 2021-05-05 | 2023-05-05 |  |  |  |  |  | 1472h | 102,316 |
| 2 | 1.1 | Kickoff састанак |  | 7d | 2021-05-05 | 2021-05-13 |  | 81d | 15d |  | Авионске карте Београд-Женева [0.1%]; Авионске карте Женева-Београд [0.1%]; Авионске карте Љубљана-Београд [0.1%]; Авионске карте Стокхолм-Београд [0.1%]; Авионске карте Стокхолм-Женева [0.1%]; Хотел Београд [0.1%]; Хотел Женева [0.1%]; Београд трошкови(превоз, храна…) [0.1%]; Женева трошкови(превоз, храна…) [0.1%] |  | 76,500 |
| 3 | 1.2 | Организација фазе анализе корисничких захтева |  | 7d | 2021-05-14 | 2021-05-24 |  | 509d |  | start no earlier than 2021-05-14 | ЕТФ - Администратор 1; ЕТФ - Техничар 1 | 112h | 1,316 |
| 4 | 1.3 | Организација фазе имплементације вештачке интелигенције |  | 20d | 2021-10-05 | 2021-11-01 | 12SS | 394d |  |  | ЕТХ - Администратор 1; ЕТХ - Доцент 1; ЕТХ - Инжењер 1; ЕТХ - Истраживач 1 | 640h | 15,680 |
| 5 | 1.4 | Организација фазе имплементације мобилне апликације |  | 15d | 2021-10-05 | 2021-10-25 | 13SS | 399d |  |  | ЕТФ - Администратор 1; ЕТФ - Администратор 2; ЕТФ - Инжењер 1; ЕТФ - Техничар 1 | 480h | 5,820 |
| 6 | 1.5 | Организација фазе имплементације веб апликације |  | 10d | 2021-09-06 | 2021-09-17 | 14SS | 425d |  |  | ЕТФ - Администратор 3; ЕТФ - Инжењер 2; ЕТФ - Техничар 1 | 240h | 3,000 |
| 7 | 2 | М1 - Завршетак просеца анализе | milestone | 0d | 2021-06-04 | 2021-06-04 | 2 | 66d | 21d | start no earlier than 2021-06-04 |  |  |  |
| 8 | 3 | Дизајнирање мобилне апликације |  | 45d | 2021-07-05 | 2021-09-03 | 7 | 45d | 21d | finish no earlier than 2021-09-03 |  |  |  |
| 9 | 4 | Дизајн веб апликације |  | 45d | 2021-07-05 | 2021-09-03 | 7 | 130d | 0d | finish no earlier than 2021-09-03 |  |  |  |
| 10 | 5 | Моделирање базе података |  | 22d | 2021-08-05 | 2021-09-03 | 7 | 435d |  | finish no earlier than 2021-09-03 |  |  |  |
| 11 | 6 | Истраживање и прикупљање података за вештачку интелигенцију |  | 132d | 2021-08-05 | 2022-02-04 | 7 | 676d | 282d | finish no earlier than 2022-02-04 |  |  |  |
| 12 | 7 | Имплементација вештачке интелигенције |  | 239d | 2021-10-05 | 2022-09-02 | 11SF | 394d | 0d | finish no earlier than 2022-09-02 |  |  |  |
| 13 | 8 | Имплементација мобилне апликације |  | 195d | 2021-10-05 | 2022-07-04 | 8 | 24d | 0d | finish no earlier than 2022-07-04 |  |  |  |
| 14 | 9 | Имплементација веб апликације |  | 110d | 2021-09-06 | 2022-02-04 | 9 | 130d | 0d | finish no earlier than 2022-02-04 |  |  |  |
| 15 | 10 | М2 - Завршетак просеца развоја софтвера | milestone | 0d | 2022-07-04 | 2022-07-04 | 13, 14 | 24d | 23d | start no earlier than 2022-07-04 |  |  |  |
| 16 | 11 | Тестирање |  | 43d | 2022-08-05 | 2022-10-04 | 15 | 1d | 0d | finish no earlier than 2022-10-04 |  |  |  |
| 17 | 12 | Интеграција |  | 66d | 2022-10-05 | 2023-01-04 | 16 | 1d | 0d | start no earlier than 2022-10-05 |  |  |  |
| 18 | 13 | Интеграционо тестирање |  | 42d | 2023-01-05 | 2023-03-03 | 17 | 1d | 0d | finish no earlier than 2023-03-03 |  |  |  |
| 19 | 14 | Евалуација и дисеминација |  | 44d | 2023-03-06 | 2023-05-04 | 18 | 1d | 0d | finish no earlier than 2023-05-04 |  |  |  |
| 20 | 15 | М3 - Завршетак пројекта | milestone | 0d | 2023-05-05 | 2023-05-05 | 19 | 1d |  | start no earlier than 2023-05-05 |  |  |  |
